# Lidl 1517 Norcross, GA - Project Schedule_R3_2026.07.15

Schedule from MS Project, 2026-07-17 to 2027-08-16.

## Calendars

- Standard: Mon-Fri 08:00-12:00, 13:00-17:00; Sat-Sun off.

## Schedule

| ID | WBS | Task | Type | Duration | Start | Finish | Predecessors | Total slack | Free slack | Constraint |
| --- | --- | --- | --- | --- | --- | --- | --- | --- | --- | --- |
| 1 | 1 | **Lidl #1517 Norcross, GA** |  | 282d | 2026-07-17 | 2027-08-16 |  | 0d |  |  |
| 2 | 1.1 | **PRECONSTRUCTION** |  | 106d | 2026-07-17 | 2026-12-11 |  | 0d |  |  |
| 3 | 1.1.1 | GC Award / Contract |  | 45d | 2026-07-17 | 2026-09-17 |  | 0d |  | start no earlier than 2026-07-17 |
| 4 | 1.1.2 | Steel Order |  | 40d | 2026-09-18 | 2026-11-12 | 3 | 196d | 0d |  |
| 5 | 1.1.3 | Steel Delivery |  | 1d | 2026-11-13 | 2026-11-13 | 4 | 196d |  |  |
| 6 | 1.1.4 | RTU Order |  | 60d | 2026-09-18 | 2026-12-10 | 3 | 176d | 0d |  |
| 7 | 1.1.5 | RTU Delivery |  | 1d | 2026-12-11 | 2026-12-11 | 6 | 176d |  |  |
| 8 | 1.1.6 | Electrical Equipment Order |  | 60d | 2026-09-18 | 2026-12-10 | 3 | 176d | 0d |  |
| 9 | 1.1.7 | Electrical Equipment Delivery |  | 1d | 2026-12-11 | 2026-12-11 | 8 | 176d |  |  |
| 10 | 1.1.8 | Storefront Order |  | 40d | 2026-09-18 | 2026-11-12 | 3 | 196d | 0d |  |
| 11 | 1.1.9 | Storefront Delivery |  | 1d | 2026-11-13 | 2026-11-13 | 10 | 196d |  |  |
| 12 | 1.2 | **SITEWORK** |  | 165d | 2026-10-05 | 2027-05-24 |  | 0d |  |  |
| 13 | 1.2.1 | Mobilization | milestone | 0d | 2026-10-05 | 2026-10-05 | 3FS+12d | 0d |  | start no earlier than 2026-08-31 |
| 14 | 1.2.2 | ACM Abatement |  | 10d | 2026-10-06 | 2026-10-19 | 13SS | 0d |  |  |
| 15 | 1.2.3 | Demolition |  | 20d | 2026-10-20 | 2026-11-16 | 14 | 0d |  |  |
| 16 | 1.2.4 | Grading |  | 20d | 2026-11-17 | 2026-12-14 | 15, 14 | 0d |  |  |
| 17 | 1.2.5 | Water to Pad |  | 25d | 2026-12-15 | 2027-01-18 | 16 | 125d | 65d |  |
| 18 | 1.2.6 | Power to XFRM |  | 25d | 2026-12-15 | 2027-01-18 | 16 | 125d | 65d |  |
| 19 | 1.2.7 | Gas to Pad |  | 25d | 2026-12-15 | 2027-01-18 | 16 | 125d | 65d |  |
| 20 | 1.2.8 | Data Conduits to Pad |  | 25d | 2026-12-15 | 2027-01-18 | 16 | 125d | 65d |  |
| 21 | 1.2.9 | SS to Pad |  | 25d | 2026-12-15 | 2027-01-18 | 16 | 125d | 65d |  |
| 22 | 1.2.10 | Storm System |  | 25d | 2026-12-15 | 2027-01-18 | 16 | 125d | 65d |  |
| 23 | 1.2.11 | Subbase |  | 15d | 2027-04-20 | 2027-05-10 | 16, 17, 18, 19, 20, 21, 22, 25 | 60d | 0d |  |
| 24 | 1.2.12 | Asphalt & Parking Lot Elements |  | 5d | 2027-05-11 | 2027-05-17 | 23 | 60d | 0d |  |
| 25 | 1.2.13 | Concrete Walkways |  | 10d | 2027-04-06 | 2027-04-19 | 16, 43 | 60d | 0d |  |
| 26 | 1.2.14 | Landscaping |  | 5d | 2027-05-18 | 2027-05-24 | 24, 25 | 60d |  |  |

| ID | WBS | Task | Type | Duration | Start | Finish | Predecessors | Total slack | Free slack |
| --- | --- | --- | --- | --- | --- | --- | --- | --- | --- |
| 27 | 1.3 | **SHELL** |  | 175d | 2026-12-14 | 2027-08-16 |  | 0d |  |
| 28 | 1.3.1 | PAD READY | milestone | 0d | 2026-12-14 | 2026-12-14 | 16 | 0d |  |
| 29 | 1.3.2 | Concrete Foundations |  | 20d | 2026-12-15 | 2027-01-11 | 28 | 0d |  |
| 30 | 1.3.3 | U/G Utilities |  | 10d | 2026-12-22 | 2027-01-04 | 29SS+5d | 160d | 0d |
| 31 | 1.3.4 | Water & Sewer Stub Outs |  | 5d | 2026-12-29 | 2027-01-04 | 30SS+5d | 160d |  |
| 32 | 1.3.5 | Electrical & LVs Stub Outs |  | 5d | 2026-12-29 | 2027-01-04 | 30SS+5d | 160d |  |
| 33 | 1.3.6 | Masonry Install |  | 40d | 2027-01-12 | 2027-03-08 | 29 | 0d |  |
| 34 | 1.3.7 | Loading Dock Concrete |  | 10d | 2027-01-19 | 2027-02-01 | 29FS+5d | 140d |  |
| 35 | 1.3.8 | Slab Pour #01 |  | 5d | 2027-01-26 | 2027-02-01 | 33SS+10d | 0d |  |
| 36 | 1.3.9 | Slab Pour #02 |  | 3d | 2027-02-02 | 2027-02-04 | 35 | 0d |  |
| 37 | 1.3.10 | Slab Pour #03 |  | 5d | 2027-02-05 | 2027-02-11 | 36 | 0d |  |
| 38 | 1.3.11 | Steel Erection |  | 10d | 2027-02-16 | 2027-03-01 | 37FS+2d | 0d |  |
| 39 | 1.3.12 | Rooftop Support Steel Completion |  | 5d | 2027-02-23 | 2027-03-01 | 38SS+5d | 120d |  |
| 40 | 1.3.13 | Complete Joist & Decking Installation |  | 7d | 2027-02-23 | 2027-03-03 | 38SS+5d | 0d |  |
| 41 | 1.3.14 | Install New Roof Curbs |  | 3d | 2027-03-04 | 2027-03-08 | 40 | 0d |  |
| 42 | 1.3.15 | Roofing Installation |  | 15d | 2027-03-09 | 2027-03-29 | 41 | 0d |  |
| 43 | 1.3.16 | Stone Veneer |  | 10d | 2027-03-23 | 2027-04-05 | 33FS+10d | 60d | 0d |
| 44 | 1.3.17 | Install Storefront Framing & Glass |  | 5d | 2027-04-06 | 2027-04-12 | 43 | 87d | 0d |
| 45 | 1.3.18 | Install Walk Pads |  | 5d | 2027-03-30 | 2027-04-05 | 42 | 95d |  |
| 46 | 1.3.19 | Install New Auto Doors |  | 3d | 2027-04-13 | 2027-04-15 | 44 | 87d |  |
| 47 | 1.3.20 | Install New Loading Dock Equipment |  | 3d | 2027-04-06 | 2027-04-08 | 43 | 92d |  |
| 48 | 1.3.21 | Sprinkler Rough-In |  | 15d | 2027-03-30 | 2027-04-19 | 37, 42 | 55d | 0d |
| 49 | 1.3.22 | Refrigeration Rough-In |  | 30d | 2027-03-30 | 2027-05-10 | 37, 42 | 45d | 0d |
| 50 | 1.3.23 | Ductwork Rough-In |  | 20d | 2027-03-30 | 2027-04-26 | 37, 42 | 31d | 0d |
| 51 | 1.3.24 | Electrical Rough-In |  | 30d | 2027-03-30 | 2027-05-10 | 37, 42 | 45d | 0d |
| 52 | 1.3.25 | Install New Rooftop Equipment |  | 3d | 2027-03-30 | 2027-04-01 | 37, 42 | 48d | 17d |
| 53 | 1.3.26 | Permimter Wall Framing & Drywall |  | 15d | 2027-03-30 | 2027-04-19 | 37, 42 | 0d |  |
| 54 | 1.3.27 | Install Freezer & Cooler Boxes |  | 9d | 2027-04-20 | 2027-04-30 | 53 | 71d | 0d |
| 55 | 1.3.28 | Plumbing Rough-In |  | 10d | 2027-03-30 | 2027-04-12 | 37, 42 | 49d | 20d |
| 56 | 1.3.29 | Install Switchgear, Wire & Pipe |  | 9d | 2027-04-20 | 2027-04-30 | 53 | 0d |  |
| 57 | 1.3.30 | Install Ext. Wood Panels |  | 10d | 2027-04-20 | 2027-05-03 | 43, 53 | 75d |  |
| 58 | 1.3.31 | Sprinkler Branch Lines |  | 5d | 2027-04-13 | 2027-04-19 | 48FS-5d | 55d | 0d |
| 59 | 1.3.32 | Install HM Frames |  | 3d | 2027-04-20 | 2027-04-22 | 53 | 77d | 0d |
| 60 | 1.3.33 | Dyrwall Finishing & Punch-Out |  | 5d | 2027-04-20 | 2027-04-26 | 53 | 39d | 0d |
| 61 | 1.3.34 | Sprinkler Heads Install |  | 5d | 2027-04-20 | 2027-04-26 | 58 | 55d | 0d |
| 62 | 1.3.35 | Panels, Wiring and Terminations |  | 10d | 2027-05-03 | 2027-05-14 | 56 | 0d |  |
| 63 | 1.3.36 | Deck Painting & Wall Painting |  | 15d | 2027-05-11 | 2027-05-31 | 48, 49, 50, 51, 55, 58, 61 | 45d | 0d |
| 64 | 1.3.37 | Concrete Polishing |  | 10d | 2027-06-01 | 2027-06-14 | 63 | 45d |  |
| 65 | 1.3.38 | Complete Branch lines |  | 5d | 2027-04-27 | 2027-05-03 | 61 | 75d |  |
| 66 | 1.3.39 | Complete Fixture and Tie-Ins |  | 5d | 2027-05-17 | 2027-05-21 | 62 | 0d |  |
| 67 | 1.3.40 | FRP Install / Stainless Panels |  | 4d | 2027-04-27 | 2027-04-30 | 53, 60 | 76d |  |
| 68 | 1.3.41 | Install Doors & Hardware |  | 5d | 2027-04-23 | 2027-04-29 | 59 | 77d |  |
| 69 | 1.3.42 | McCue Bumper Install |  | 3d | 2027-04-27 | 2027-04-29 | 53, 60 | 77d |  |
| 70 | 1.3.43 | Kitchen Hood Install |  | 3d | 2027-04-27 | 2027-04-29 | 50, 52 | 31d | 16d |
| 71 | 1.3.44 | Ceiling Devices |  | 5d | 2027-05-24 | 2027-05-28 | 56, 66 | 56d |  |
| 72 | 1.3.45 | FA Rough-In |  | 10d | 2027-05-24 | 2027-06-04 | 56, 66 | 10d |  |
| 73 | 1.3.46 | LV Rough-In |  | 20d | 2027-05-24 | 2027-06-18 | 56, 66 | 0d |  |
| 74 | 1.3.47 | Install ACT Grid |  | 5d | 2027-05-24 | 2027-05-28 | 56, 66, 70 | 15d | 10d |
| 75 | 1.3.48 | Light Fixtures Installation |  | 15d | 2027-05-24 | 2027-06-11 | 56, 66 | 38d | 0d |
| 76 | 1.3.49 | Epoxy Install |  | 5d | 2027-05-03 | 2027-05-07 | 53, 60, 54 | 71d |  |
| 77 | 1.3.50 | Install ACT |  | 3d | 2027-06-14 | 2027-06-16 | 74, 75 | 38d | 0d |
| 78 | 1.3.51 | Install FA Devices |  | 5d | 2027-06-17 | 2027-06-23 | 77 | 38d |  |
| 79 | 1.3.52 | RTU Startup |  | 2d | 2027-06-21 | 2027-06-22 | 50, 53, 55, 60, 62, 70, 72, 73, 74 | 39d |  |
| 80 | 1.3.53 | MEP Trim Out |  | 5d | 2027-06-21 | 2027-06-25 | 50, 53, 55, 60, 62, 70, 72, 73, 74 | 0d |  |
| 81 | 1.3.54 | FA Panel Programming |  | 5d | 2027-06-28 | 2027-07-02 | 80 | 0d |  |

| ID | WBS | Task | Type | Duration | Start | Finish | Predecessors | Total slack |
| --- | --- | --- | --- | --- | --- | --- | --- | --- |
| 82 | 1.3.55 | **Lidl FM Onsite for Setup** |  | 20d | 2027-07-06 | 2027-08-02 |  | 0d |
| 83 | 1.3.55.1 | Millwork Delivery and Install |  | 10d | 2027-07-06 | 2027-07-19 | 81FS+1d | 10d |
| 84 | 1.3.55.2 | Registers and Front End Equipment Delivery and Install |  | 5d | 2027-07-06 | 2027-07-12 | 81FS+1d | 15d |
| 85 | 1.3.55.3 | FM Shelving Delivery & Intall |  | 10d | 2027-07-06 | 2027-07-19 | 81FS+1d | 10d |
| 86 | 1.3.55.4 | Bakery Ovens |  | 3d | 2027-07-07 | 2027-07-09 | 81FS+2d | 16d |
| 87 | 1.3.55.5 | All Sinks and Controls |  | 2d | 2027-07-07 | 2027-07-08 | 81FS+2d | 17d |
| 88 | 1.3.55.6 | Self-Checkouts Delivery & Install |  | 3d | 2027-07-13 | 2027-07-15 | 81FS+6d | 12d |
| 89 | 1.3.55.7 | Décor Package Install |  | 10d | 2027-07-20 | 2027-08-02 | 81FS+11d | 0d |
| 90 | 1.3.56 | **Final Inspections** |  | 10d | 2027-08-03 | 2027-08-16 |  | 0d |
| 91 | 1.3.56.1 | MEP Final Inspections (MEPR) |  | 5d | 2027-08-03 | 2027-08-09 | 82 | 5d |
| 92 | 1.3.56.2 | Final Life Safety Inspections |  | 5d | 2027-08-03 | 2027-08-09 | 82 | 5d |
| 93 | 1.3.56.3 | 3rd Party Temp (TBD) |  | 5d | 2027-08-03 | 2027-08-09 | 82 | 5d |
| 94 | 1.3.56.4 | Construction Complete |  | 5d | 2027-08-10 | 2027-08-16 | 82FS+5d | 0d |
| 95 | 1.3.56.5 | Final Health Inspection (TBD) |  | 2d | 2027-08-10 | 2027-08-11 | 82FS+5d | 3d |
| 96 | 1.3.56.6 | 3rd Party Building Final |  | 4d | 2027-08-10 | 2027-08-13 | 82FS+5d | 1d |
| 97 | 1.3.56.7 | County Final Inspection | milestone | 0d | 2027-08-09 | 2027-08-09 | 82FS+5d | 5d |
