# Lidl #1517 Norcross, GA - Project Schedule R5 (Mobilization 10/19/26)

Schedule from MS Project, 2026-07-17 to 2027-07-26, status date 2026-10-09, A marks actual dates.
Place Services, Inc

## Calendars

- Standard: Mon-Fri 08:00-12:00, 13:00-17:00; Sat-Sun off.

## Schedule

| ID | WBS | Task | Type | Duration | Start | Finish | Predecessors | Complete | Remaining | Total slack | Free slack | Constraint | Deadline | Lidl Week | Key |
| --- | --- | --- | --- | --- | --- | --- | --- | --- | --- | --- | --- | --- | --- | --- | --- |
| 1 | 1 | **CONTRACT MILESTONES (Owner Agreement Sec. 3.6.1 / Exh. J)** |  | 202d | 2026-10-15 | 2027-07-26 |  |  |  | -8d | 0d |  |  | Week -9 | S_MS |
| 2 | 1.1 | MS-01 Mobilization | milestone | 0d | 2026-10-19 | 2026-10-19 | 60 |  |  | -9d | 0d |  | 2026-10-05 | Week -8 | M01 |
| 3 | 1.2 | MS-02 Order Confirmation (RTUs, Lighting, Signage, Steel, Cold Rooms, Generator, Elec. Panels) | milestone | 0d | 2026-10-15 | 2026-10-15 | 31, 34, 37, 42, 45, 48, 51, 25 |  |  | 2d |  |  | 2026-10-19 | Week -9 | M02 |
| 4 | 1.3 | MS-03 PAD READY - WEEK 0 (3rd-Party Certified) | milestone | 0d | 2026-12-11 | 2026-12-11 | 74 |  |  | -10d | 0d |  | 2026-11-27 | Week 0 | M03 |
| 5 | 1.4 | MS-04 Foundation Complete | milestone | 0d | 2027-01-08 | 2027-01-08 | 99 |  |  | -10d | 0d |  | 2026-12-25 | Week 4 | M04 |
| 6 | 1.5 | MS-05 BOH, Cold Room & Sales Floor Concrete | milestone | 0d | 2027-01-27 | 2027-01-27 | 109 |  |  | 0d |  |  | 2027-01-27 | Week 7 | M05 |
| 7 | 1.6 | MS-06 CMU Block Completion | milestone | 0d | 2027-02-12 | 2027-02-12 | 105 |  |  | 5d |  |  | 2027-02-19 | Week 9 | M06 |
| 8 | 1.7 | MS-07 Steel Structure & Roof Completion | milestone | 0d | 2027-03-12 | 2027-03-12 | 115, 113 |  |  | 0d |  |  | 2027-03-12 | Week 13 | M07 |
| 9 | 1.8 | MS-08 Building Fully Enclosed | milestone | 0d | 2027-03-17 | 2027-03-17 | 115, 119, 120, 121, 122, 135SS, 132SS |  |  | 7d |  |  | 2027-03-26 | Week 14 | M08 |
| 10 | 1.9 | MS-10 Power, Gas, Water & Telecom Connections | milestone | 0d | 2027-04-09 | 2027-04-09 | 140, 141, 142, 143 |  |  | 14d |  |  | 2027-04-29 | Week 17 | M10 |
| 11 | 1.10 | MS-09 Sales Floor Polishing | milestone | 0d | 2027-05-17 | 2027-05-17 | 156 |  |  | 0d |  |  | 2027-05-17 | Week 23 | M09 |
| 12 | 1.11 | MS-11 SUBSTANTIAL COMPLETION / FM HANDOVER - WEEK 24 | milestone | 0d | 2027-05-28 | 2027-05-28 | 174 |  |  | 0d |  |  | 2027-06-21 | Week 24 | M11 |
| 13 | 1.12 | MS-12 BMS - FPT | milestone | 0d | 2027-06-28 | 2027-06-28 | 182 |  |  | 0d |  |  | 2027-06-28 | Week 29 | M12 |
| 14 | 1.13 | MS-13 Sales Handover | milestone | 0d | 2027-07-02 | 2027-07-02 | 202 |  |  | 5d |  |  | 2027-07-19 | Week 29 | M13 |
| 15 | 1.14 | MS-14 FINAL COMPLETION / C of O | milestone | 0d | 2027-07-12 | 2027-07-12 | 206 |  |  | 0d |  |  | 2027-07-26 | Week 31 | M14 |
| 16 | 1.15 | MS-15 Release of Retention | milestone | 0d | 2027-07-26 | 2027-07-26 | 208 |  |  | 0d |  |  | 2027-08-01 | Week 33 | M15 |
| 17 | 2 | **LIDL KEY MILESTONES (Non-Contract, per GC Playbook)** |  | 29d | 2027-05-03 | 2027-06-11 |  |  |  | 14d |  |  |  | Week 21 | S_LM |
| 18 | 2.1 | IT Readiness - Site Ready for IT Fit-Out | milestone | 0d | 2027-05-04 | 2027-05-04 | 161, 104, 140 |  |  | 14d | 0d |  |  | Week 21 | L_IT |
| 19 | 2.2 | Security Readiness Checklist Submitted (min. 7 days before vendor) | milestone | 0d | 2027-05-03 | 2027-05-03 | 147, 140, 155, 9, 153 |  |  | 15d | 1d |  |  | Week 21 | L_SEC |
| 20 | 2.3 | Cold Rooms Ready for Cool-Down | milestone | 0d | 2027-05-31 | 2027-05-31 | 169, 170 |  |  | 18d | 0d |  |  | Week 25 | L_COOL |
| 21 | 2.4 | Certificate of Occupancy / Stocking & Training Permit | milestone | 0d | 2027-06-11 | 2027-06-11 | 200 |  |  | 14d |  |  |  | Week 26 | L_CO |
| 22 | 3 | **PRECONSTRUCTION, PERMITS & PROCUREMENT** |  | 160d | 2026-07-17 A | 2027-02-25 |  | 5% | 151.44d | 84d |  |  |  | Week -22 | S_PRE |
| 23 | 3.1 | GC Award / Contract |  | 45d | 2026-07-17 A | 2026-09-17 A |  | 100% |  |  |  | start no earlier than 2026-07-17 |  | Week -22 | AWARD |
| 24 | 3.2 | Notice to Proceed | milestone | 0d | 2026-09-25 A | 2026-09-25 A | 23 | 100% |  |  |  | start no earlier than 2026-09-25 |  | Week -12 | NTP |
| 25 | 3.3 | Submit Potentially Impacted Materials List (Sec. 7.5) |  | 1d | 2026-09-25 | 2026-09-25 | 24 |  |  | 16d | 14d |  | 2026-10-25 | Week -12 | PIM |
| 26 | 3.4 | County Pre-Construction Meetings (Inspector, Utility & ROW/Traffic Pre-Cons) |  | 5d | 2026-09-25 | 2026-10-01 | 24 |  |  | 11d |  |  |  | Week -12 | PRECON |
| 27 | 3.5 | Demolition Permit / LDP (EPN 2024-00519) in Hand | milestone | 0d | 2026-09-25 | 2026-09-25 | 24 |  |  | 6d |  |  |  | Week -12 | DEMOPMT |
| 28 | 3.6 | Building Permit Issued | milestone | 0d | 2026-09-25 | 2026-09-25 | 24 |  |  | 46d |  |  |  | Week -12 | BLDGPMT |

Notes:
- 1: Contract milestone dates shown as Deadlines (green arrow). A red indicator means the forecast is past the contract date. Milestone dates change only by executed CO (Sec. 6.1).
- 2: Exh. J pmt #1 (5%). Contract 10/5/26; forecast 10/19/26 (2-week push). $500/day milestone LD (Sec. 3.6.1).
- 3: Exh. J pmt #3 (5%). Approved submittals + order confirmations.
- 4: Exh. J pmt #4 (5%). Incl. E&S, clearing, grading, retaining walls. 8 weeks after Mobilization (2 wk abatement / 2 wk demo / 4 wk earthwork).
- 5: Exh. J pmt #5 (10%). 3rd-party sign-off.
- 6: Exh. J pmt #8 (10%). FF/FL reports from 3rd-party inspector.
- 7: Exh. J pmt #6 (5%). All CMU incl. ring beams.
- 8: Exh. J pmt #7 (15%). 3rd-party steel sign-off; watertight roof.
- 9: Exh. J pmt #9 (5%). Shopfront installed; drywall framing and rough-ins commenced.
- 10: Exh. J pmt #11 (5%). Permanent utilities with metering.
- 11: Exh. J pmt #10 (5%). No defects/cracking.
- 12: Exh. J pmt #12 (10%). 24 weeks after Pad Ready. Exh. N-1 / SC Checklist (FM Fit-Out & IT) signed. LD $2,500/day (Sec. 3.6.2).
- 13: Exh. J pmt #13 (5%). BMS FPT with no punch; Melink report cleared.
- 14: Exh. J pmt #14 (5%). Training & Stocking permit.
- 15: Exh. J pmt #15 (5%). LD $5,000/day (Sec. 3.6.2).
- 16: Exh. J item 16. Confirm $39,794 retention discrepancy with Lidl.
- 18: Per 06 IT Readiness Checklist / SC Checklist IT page.
- 19: 07 Security Readiness: $1,500/day surcharge if not ready.
- 20: SC Checklist Sec. 2.
- 24: NTP 9/25/26 per Project Info.
- 25: 30 days from Effective Date. No escalation relief without it.
- 26: OAC-001: no site/ROW work until county pre-cons held. Cole's = utility pre-con; R.J. Haynie = traffic/ROW pre-con.
- 27: Confirm status - Permit Tracker not yet populated.
- 28: Confirm status.

| ID | WBS | Task | Type | Duration | Start | Finish | Predecessors | Total slack | Free slack | Lidl Week | Key |
| --- | --- | --- | --- | --- | --- | --- | --- | --- | --- | --- | --- |
| 29 | 3.7 | **Submittals & Long-Lead Procurement** |  | 110d | 2026-09-25 | 2027-02-25 |  | 2d |  | Week -12 | S_PROC |
| 30 | 3.7.1 | Steel, Joists & Deck - Shop Drawings & Approval |  | 15d | 2026-09-25 | 2026-10-15 | 24 | 2d | 0d | Week -12 | SUB_STL |
| 31 | 3.7.2 | Steel - Order Confirmation | milestone | 0d | 2026-10-15 | 2026-10-15 | 30 | 2d | 0d | Week -9 | OC_STL |
| 32 | 3.7.3 | Steel - Fabrication & Delivery |  | 40d | 2026-10-16 | 2026-12-10 | 31 | 36d |  | Week -9 | FAB_STL |
| 33 | 3.7.4 | RTUs - Submittal & Approval (SUB-001) |  | 15d | 2026-09-25 | 2026-10-15 | 24 | 2d | 0d | Week -12 | SUB_RTU |
| 34 | 3.7.5 | RTUs - Order Confirmation | milestone | 0d | 2026-10-15 | 2026-10-15 | 33 | 2d | 0d | Week -9 | OC_RTU |
| 35 | 3.7.6 | RTUs - Fabrication & Delivery |  | 60d | 2026-10-16 | 2027-01-07 | 34 | 89d | 41d | Week -9 | FAB_RTU |
| 36 | 3.7.7 | Electrical Gear / Prefab Power Center & Panels - Submittal & Approval |  | 15d | 2026-09-25 | 2026-10-15 | 24 | 2d | 0d | Week -12 | SUB_SWGR |
| 37 | 3.7.8 | Electrical Gear - Order Confirmation | milestone | 0d | 2026-10-15 | 2026-10-15 | 36 | 2d | 0d | Week -9 | OC_SWGR |
| 38 | 3.7.9 | Electrical Gear - Fabrication & Delivery |  | 60d | 2026-10-16 | 2027-01-07 | 37 | 58d | 51d | Week -9 | FAB_SWGR |
| 39 | 3.7.10 | Storefront & Auto Doors - Submittal & Approval |  | 20d | 2026-09-25 | 2026-10-22 | 24 | 63d | 0d | Week -12 | SUB_SF |
| 40 | 3.7.11 | Storefront & Auto Doors - Fabrication & Delivery |  | 40d | 2026-10-23 | 2026-12-17 | 39 | 63d | 56d | Week -8 | FAB_SF |
| 41 | 3.7.12 | Cold Rooms (KPS) & Refrigeration Equipment - Submittal & Approval |  | 15d | 2026-09-25 | 2026-10-15 | 24 | 2d | 0d | Week -12 | SUB_COLD |
| 42 | 3.7.13 | Cold Rooms - Order Confirmation | milestone | 0d | 2026-10-15 | 2026-10-15 | 41 | 2d | 0d | Week -9 | OC_COLD |
| 43 | 3.7.14 | Cold Rooms & Refrigeration Equipment - Fabrication & Delivery |  | 60d | 2026-10-16 | 2027-01-07 | 42 | 83d | 41d | Week -9 | FAB_COLD |
| 44 | 3.7.15 | Lighting (Nordeon) - Submittal & Approval |  | 15d | 2026-09-25 | 2026-10-15 | 24 | 2d | 0d | Week -12 | SUB_LTG |
| 45 | 3.7.16 | Lighting - Order Confirmation | milestone | 0d | 2026-10-15 | 2026-10-15 | 44 | 2d | 0d | Week -9 | OC_LTG |
| 46 | 3.7.17 | Lighting - Fabrication & Delivery |  | 50d | 2026-10-16 | 2026-12-24 | 45 | 87d | 79d | Week -9 | FAB_LTG |
| 47 | 3.7.18 | Signage (Building & Monument) - Submittal & Approval |  | 15d | 2026-09-25 | 2026-10-15 | 24 | 2d | 0d | Week -12 | SUB_SIGN |
| 48 | 3.7.19 | Signage - Order Confirmation | milestone | 0d | 2026-10-15 | 2026-10-15 | 47 | 2d | 0d | Week -9 | OC_SIGN |
| 49 | 3.7.20 | Signage - Fabrication & Delivery |  | 50d | 2026-10-16 | 2026-12-24 | 48 | 129d | 76d | Week -9 | FAB_SIGN |
| 50 | 3.7.21 | Generator & ATS - Submittal & Approval |  | 15d | 2026-09-25 | 2026-10-15 | 24 | 2d | 0d | Week -12 | SUB_GEN |
| 51 | 3.7.22 | Generator - Order Confirmation | milestone | 0d | 2026-10-15 | 2026-10-15 | 50 | 2d | 0d | Week -9 | OC_GEN |
| 52 | 3.7.23 | Generator & ATS - Fabrication & Delivery |  | 80d | 2026-10-16 | 2027-02-04 | 51 | 78d | 40d | Week -9 | FAB_GEN |
| 53 | 3.7.24 | BMS (Copeland/Emerson) - Submittal & Approval |  | 15d | 2026-09-25 | 2026-10-15 | 24 | 104d | 0d | Week -12 | SUB_BMS |
| 54 | 3.7.25 | BMS Panels - Delivery |  | 40d | 2026-10-16 | 2026-12-10 | 53 | 104d | 90d | Week -9 | FAB_BMS |
| 55 | 3.7.26 | HM Doors/Hardware, OH Doors & Dock Equipment - Submittal & Approval |  | 20d | 2026-09-25 | 2026-10-22 | 24 | 68d | 0d | Week -12 | SUB_DOCK |
| 56 | 3.7.27 | HM Doors/Hardware, OH Doors & Dock Equipment - Fabrication & Delivery |  | 40d | 2026-10-23 | 2026-12-17 | 55 | 68d | 41d | Week -8 | FAB_DOCK |
| 57 | 3.7.28 | Traffic Signal Strain Poles & Mast Arms - Submittal & Approval (SUB-009/010) |  | 20d | 2026-09-25 | 2026-10-22 | 24 | 65d | 0d | Week -12 | SUB_SIG |
| 58 | 3.7.29 | Traffic Signal Poles & Mast Arms - Fabrication & Delivery |  | 90d | 2026-10-23 | 2027-02-25 | 57 | 65d | 0d | Week -8 | FAB_SIG |

Notes:
- 29: Update durations with actual status from the Submittal Log.
- 30: Place mill/joist order on approval to hold the Order Confirmation date.
- 33: SUB-001 R1 Make Corrections Noted 9/28/26.
- 36: PCX/Schneider prefab power center (GC-furnished).
- 39: Schaal Glass.
- 44: GC-furnished, EC-installed.
- 50: Listed in contract Order Confirmation milestone; not found on CCD1 E-sheets - CONFIRM scope.
- 53: GC-furnished.
- 57: R.J. Haynie. Material certification required before signal work.

| ID | WBS | Task | Type | Duration | Start | Finish | Predecessors | Total slack | Free slack | Constraint | Lidl Week | Key |
| --- | --- | --- | --- | --- | --- | --- | --- | --- | --- | --- | --- | --- |
| 59 | 4 | **SITEWORK - PRE-PAD (WEEK -8 TO WEEK -1)** |  | 40d | 2026-10-19 | 2026-12-11 |  | -10d | 0d |  | Week -8 | S_PREPAD |
| 60 | 4.1 | Mobilization | milestone | 0d | 2026-10-19 | 2026-10-19 | 24, 27 | -10d | 0d | start no earlier than 2026-10-19 | Week -8 | MOB |
| 61 | 4.2 | Install Phase I E&S Controls, Construction Entrance & Tree Protection |  | 5d | 2026-10-19 | 2026-10-23 | 60, 26SS | -5d | 0d |  | Week -8 | ESC |
| 62 | 4.3 | NPDES / County E&S Inspection (Roberts Environmental) |  | 1d | 2026-10-26 | 2026-10-26 | 61 | 4d |  |  | Week -7 | NPDES |
| 63 | 4.4 | Existing Utility Disconnects / Make-Safe |  | 5d | 2026-10-19 | 2026-10-23 | 60 | -10d | 0d |  | Week -8 | UTILDISC |
| 64 | 4.5 | **Abatement (Week -8 to -7)** |  | 10d | 2026-10-19 | 2026-10-30 |  | -10d | 0d |  | Week -8 | S_ABATE |
| 65 | 4.5.1 | ACM Abatement |  | 9d | 2026-10-19 | 2026-10-29 | 60, 63SS | -10d | 0d |  | Week -8 | ABATE |
| 66 | 4.5.2 | Clearance Air Monitoring & Abatement Closeout Report |  | 1d | 2026-10-30 | 2026-10-30 | 65 | -10d | 0d |  | Week -7 | ABATECLR |
| 67 | 4.6 | **Demolition (Week -6 to -5)** |  | 10d | 2026-11-02 | 2026-11-13 |  | -10d | 0d |  | Week -6 | S_DEMO |
| 68 | 4.6.1 | Building Demolition & Debris Haul-Off |  | 7d | 2026-11-02 | 2026-11-10 | 66, 63, 61 | -10d | 0d |  | Week -6 | DEMO |
| 69 | 4.6.2 | Remove Existing Slab, Foundations & Paving |  | 3d | 2026-11-11 | 2026-11-13 | 68 | -10d | 0d |  | Week -5 | DEMOPAV |
| 70 | 4.7 | **Earthwork (Week -4 to -1)** |  | 20d | 2026-11-16 | 2026-12-11 |  | -10d | 0d |  | Week -4 | S_EARTH |
| 71 | 4.7.1 | Clearing, Grubbing & Strip Topsoil |  | 3d | 2026-11-16 | 2026-11-18 | 69, 62 | -10d | 0d |  | Week -4 | CLEAR |
| 72 | 4.7.2 | Detention Pond / Sediment Basin, Mass Grading, Undercut & Building Pad Fill |  | 13d | 2026-11-19 | 2026-12-07 | 71 | -10d | 0d |  | Week -4 | GRADE |
| 73 | 4.7.3 | Building Pad Fine Grade, Proof-Roll & Compaction Testing |  | 2d | 2026-12-08 | 2026-12-09 | 72 | -10d | 0d |  | Week -1 | PADFINE |
| 74 | 4.7.4 | 3rd-Party Building Pad Certification |  | 2d | 2026-12-10 | 2026-12-11 | 73 | -10d | 0d |  | Week -1 | PADCERT |
| 75 | 5 | **SITEWORK - POST-PAD, UTILITIES & OFFSITE** |  | 113d | 2026-12-14 | 2027-05-19 |  | 29d |  |  | Week 1 | S_POST |
| 76 | 5.1 | Storm Drainage System & Pond Outlet Structure |  | 25d | 2026-12-14 | 2027-01-15 | 4 | 69d | 10d |  | Week 1 | SU_STORM |
| 77 | 5.2 | Domestic Water Service & Fire Main to Building |  | 20d | 2026-12-14 | 2027-01-08 | 4 | 74d | 45d |  | Week 1 | SU_WTR |
| 78 | 5.3 | Sanitary Sewer & Grease Interceptor |  | 15d | 2026-12-14 | 2027-01-01 | 4 | 79d | 50d |  | Week 1 | SU_SS |
| 79 | 5.4 | Gas Service to Building |  | 15d | 2026-12-14 | 2027-01-01 | 4 | 79d | 50d |  | Week 1 | SU_GAS |
| 80 | 5.5 | Primary Power Conduit & Transformer Pad (Jackson EMC) |  | 20d | 2026-12-14 | 2027-01-08 | 4 | 73d | 0d |  | Week 1 | SU_PWR |
| 81 | 5.6 | Telecom Conduits to Demarc (3 x 4") |  | 10d | 2026-12-14 | 2026-12-25 | 4 | 84d | 55d |  | Week 1 | SU_DATA |
| 82 | 5.7 | Site Lighting Bases, Conduit & EV Charger Conduit |  | 10d | 2027-01-11 | 2027-01-22 | 76SS+10d, 80 | 106d | 58d |  | Week 5 | SU_LTBASE |
| 83 | 5.8 | Curb & Gutter, Dumpster Pad & Cart Corral Walls |  | 10d | 2027-03-15 | 2027-03-26 | 76, 77, 78, 79, 80, 81, 118 | 29d | 0d |  | Week 14 | CURB |
| 84 | 5.9 | Concrete Walks, Storefront Sidewalk & Heavy-Duty Concrete |  | 10d | 2027-03-22 | 2027-04-02 | 118, 119, 83SS+5d | 51d | 8d |  | Week 15 | WALKS |
| 85 | 5.10 | Paving Subbase / GAB |  | 10d | 2027-03-29 | 2027-04-09 | 83 | 29d | 0d |  | Week 16 | SUBBASE |
| 86 | 5.11 | Asphalt Binder Course |  | 3d | 2027-04-12 | 2027-04-14 | 85 | 29d | 0d |  | Week 18 | BINDER |
| 87 | 5.12 | Site Lighting Poles & Fixtures; EV Charger |  | 5d | 2027-04-15 | 2027-04-21 | 82, 86, 46 | 48d | 19d |  | Week 18 | LTPOLE |
| 88 | 5.13 | Monument Sign Install |  | 3d | 2027-04-15 | 2027-04-19 | 49, 86 | 50d | 21d |  | Week 18 | MONSIGN |
| 89 | 5.14 | Landscaping & Sod |  | 10d | 2027-04-15 | 2027-04-28 | 86, 84 | 43d | 14d |  | Week 18 | LANDSC |
| 90 | 5.15 | Final Asphalt Surface Course & Striping |  | 4d | 2027-05-13 | 2027-05-18 | 86FS+20d, 84 | 29d | 0d |  | Week 22 | FINALASPH |
| 91 | 5.16 | Site / Grading, Zoning & ADA Final Inspection |  | 1d | 2027-05-19 | 2027-05-19 | 90, 89, 87, 88, 96 | 29d | 15d |  | Week 23 | SITEFINAL |

Notes:
- 59: 8 weeks Mobilization to Pad Ready.
- 60: Start No Earlier Than 10/19/26.
- 61: Required before any land disturbance (kickoff email).
- 62: Civil resubmittal on hold until Phase 1 E&S installed (OAC-001).
- 63: Confirm disconnects before abatement and demo.
- 65: Against demolition allowance.
- 66: Demo cannot start until abatement complete and cleared.
- 72: Pond outfall per C-set p45.
- 78: CCD1 revised grease interceptor.
- 80: Service subject to utility company engineering.
- 81: AT&T.
- 86: Report date on IT Readiness checklist.
- 89: Lawn must be vegetated and healthy at handover (GCP 32.0).

| ID | WBS | Task | Type | Duration | Start | Finish | Predecessors | Total slack | Free slack | Lidl Week | Key |
| --- | --- | --- | --- | --- | --- | --- | --- | --- | --- | --- | --- |
| 92 | 5.17 | **Offsite / ROW & Traffic Signal (R.J. Haynie / ROW Sub)** |  | 76d | 2026-12-14 | 2027-03-29 |  | 65d |  | Week 1 | S_ROW |
| 93 | 5.17.1 | ROW Improvements (Curb, Sidewalk, Drive Aprons) |  | 25d | 2026-12-14 | 2027-01-15 | 26, 4 | 109d | 44d | Week 1 | ROW |
| 94 | 5.17.2 | Traffic Signal Install (Strain Poles, Mast Arms, Cabinet, CCTV/CV-RSU) |  | 20d | 2027-02-26 | 2027-03-25 | 58, 93SS+10d | 65d | 0d | Week 11 | SIGNAL |
| 95 | 5.17.3 | GCDOT Signal Timing & Turn-On |  | 2d | 2027-03-26 | 2027-03-29 | 94 | 65d | 0d | Week 15 | SIGON |
| 96 | 5.17.4 | ROW / Signal Work Complete & Accepted | milestone | 0d | 2027-03-29 | 2027-03-29 | 93, 95 | 65d | 36d | Week 16 | ROWDONE |
| 97 | 6 | **BUILDING SHELL & EXTERIOR (FROM WEEK 1)** |  | 88d | 2026-12-14 | 2027-04-14 |  | -10d | 0d | Week 1 | S_SHELL |
| 98 | 6.1 | Building Foundations (Footings, Piers & Loading Dock Retaining Wall) |  | 20d | 2026-12-14 | 2027-01-08 | 4, 28 | -10d | 0d | Week 1 | FND |
| 99 | 6.2 | Foundation 3rd-Party Inspection & Sign-Off |  | 1d | 2027-01-08 | 2027-01-08 | 98FF | -10d | 0d | Week 4 | FNDINSP |
| 100 | 6.3 | U/G Plumbing (Sanitary, Grease, Domestic) & Stub-Outs |  | 10d | 2026-12-21 | 2027-01-01 | 98SS+5d | 4d | 0d | Week 2 | UGP |
| 101 | 6.4 | U/G Electrical & LV Conduits / Stub-Ups |  | 10d | 2026-12-21 | 2027-01-01 | 98SS+5d | 5d |  | Week 2 | UGE |
| 102 | 6.5 | Under-Slab Plumbing Inspection & Camera Report |  | 1d | 2027-01-04 | 2027-01-04 | 100 | 4d |  | Week 4 | UGINSP |
| 103 | 6.6 | Slab Pre-Pour Meeting w/ Lidl DM (min. 4 weeks before pour) |  | 1d | 2026-12-14 | 2026-12-14 | 4 | 1d |  | Week 1 | PREPOUR |
| 104 | 6.7 | Loading Dock & Truck Well Concrete |  | 10d | 2027-01-18 | 2027-01-29 | 98FS+5d | 37d | 10d | Week 6 | LDCONC |
| 105 | 6.8 | Masonry (CMU) Walls incl. Bond / Ring Beams |  | 35d | 2026-12-28 | 2027-02-12 | 98SS+10d | 5d | 0d | Week 3 | CMU |
| 106 | 6.9 | Slab Pour #01 - BOH / Warehouse |  | 5d | 2027-01-11 | 2027-01-15 | 98, 102, 101, 103FS+18d | 0d |  | Week 5 | SLAB1 |
| 107 | 6.10 | Slab Pour #02 - Cold Rooms |  | 3d | 2027-01-18 | 2027-01-20 | 106 | 0d |  | Week 6 | SLAB2 |
| 108 | 6.11 | Slab Pour #03 - Sales Floor |  | 5d | 2027-01-21 | 2027-01-27 | 107 | 0d |  | Week 6 | SLAB3 |
| 109 | 6.12 | FF/FL Testing & 3rd-Party Report |  | 1d | 2027-01-27 | 2027-01-27 | 108FF | 0d |  | Week 7 | FFFL |
| 110 | 6.13 | Structural Steel Erection |  | 10d | 2027-02-01 | 2027-02-12 | 108FS+2d, 105SS+20d, 32 | 0d |  | Week 8 | STEEL |
| 111 | 6.14 | Joist & Metal Deck Installation |  | 7d | 2027-02-08 | 2027-02-16 | 110SS+5d, 105SS+25d | 0d |  | Week 9 | JOIST |
| 112 | 6.15 | Rooftop Support Steel |  | 5d | 2027-02-10 | 2027-02-16 | 111SS+2d | 0d |  | Week 9 | RTSTEEL |
| 113 | 6.16 | Steel 3rd-Party Inspection & Punch |  | 2d | 2027-02-17 | 2027-02-18 | 111, 112 | 16d |  | Week 10 | STEELINSP |
| 114 | 6.17 | Install Roof Curbs |  | 3d | 2027-02-17 | 2027-02-19 | 111, 112 | 0d |  | Week 10 | CURBS |
| 115 | 6.18 | TPO Roofing Installation (Watertight) |  | 15d | 2027-02-22 | 2027-03-12 | 114 | 0d |  | Week 11 | ROOF |
| 116 | 6.19 | Roof Walk Pads |  | 5d | 2027-03-15 | 2027-03-19 | 115, 117 | 74d |  | Week 14 | WALKPAD |
| 117 | 6.20 | Set Rooftop Equipment (RTUs, Exhaust Fans, Condensing Units) |  | 3d | 2027-03-08 | 2027-03-10 | 115SS+10d, 114, 35, 43 | 48d | 2d | Week 13 | RTUSET |
| 118 | 6.21 | Manufactured Stone Veneer |  | 10d | 2027-03-01 | 2027-03-12 | 105FS+10d | 7d | 0d | Week 12 | STONE |
| 119 | 6.22 | Storefront Framing & Glass |  | 5d | 2027-03-08 | 2027-03-12 | 118SS+5d, 40 | 7d | 0d | Week 13 | SF |
| 120 | 6.23 | Install Automatic Entrance Doors |  | 3d | 2027-03-15 | 2027-03-17 | 119 | 7d | 0d | Week 14 | AUTODR |
| 121 | 6.24 | Exterior HM Doors & Frames (Grout Frames) |  | 3d | 2027-02-15 | 2027-02-17 | 105, 56 | 27d | 20d | Week 10 | EXTHM |
| 122 | 6.25 | Overhead Doors, Dock Leveler & Bumpers |  | 3d | 2027-02-15 | 2027-02-17 | 104, 105, 56 | 27d | 20d | Week 10 | OHDOOR |
| 123 | 6.26 | Phenolic Wood-Look Panels, Insulated Metal Panels & Canopy |  | 10d | 2027-03-08 | 2027-03-19 | 118SS+5d, 115SS+5d | 69d | 0d | Week 13 | PANELS_EXT |
| 124 | 6.27 | Exterior Sealants & Paint |  | 5d | 2027-03-22 | 2027-03-26 | 123, 119 | 69d |  | Week 15 | EXTSEAL |
| 125 | 6.28 | Building Signage Install |  | 3d | 2027-04-12 | 2027-04-14 | 123, 49, 140 | 56d |  | Week 18 | BLDGSIGN |

Notes:
- 92: Jimmy Carter Blvd & Shelby Dr.
- 93: Widening/turn-lane scope not confirmed from civil sheets.
- 94: Maintain existing signals during construction.
- 98: S300 / S301-7.
- 102: Lidl requires camera report before slab pour.
- 103: GCP Scope Clarification 3.0.
- 111: Exposed deck underside is aesthetically critical.
- 121: Frames filled with concrete (Security Readiness).

| ID | WBS | Task | Duration | Start | Finish | Predecessors | Total slack | Free slack | Lidl Week | Key |
| --- | --- | --- | --- | --- | --- | --- | --- | --- | --- | --- |
| 126 | 7 | **INTERIORS & MEP (WEEK 12 TO WEEK 24)** | 66d | 2027-03-01 | 2027-05-31 |  | 0d |  | Week 12 | S_INT |
| 127 | 7.1 | Sprinkler Mains & Rough-In | 15d | 2027-03-01 | 2027-03-19 | 111, 108, 115SS+5d | 5d | 0d | Week 12 | SPRK |
| 128 | 7.2 | Sprinkler Branch Lines | 5d | 2027-03-15 | 2027-03-19 | 127FS-5d | 5d | 0d | Week 14 | SPRKBR |
| 129 | 7.3 | Sprinkler Heads Install | 5d | 2027-03-22 | 2027-03-26 | 128 | 5d | 0d | Week 15 | SPRKH |
| 130 | 7.4 | Complete Branch Lines & Hydrostatic Test | 5d | 2027-03-29 | 2027-04-02 | 129 | 5d |  | Week 16 | SPRKHYD |
| 131 | 7.5 | Ductwork Rough-In | 20d | 2027-03-01 | 2027-03-26 | 111, 108, 115SS+5d | 10d | 0d | Week 12 | DUCT |
| 132 | 7.6 | Electrical Rough-In (Overhead, Cable Tray & Branch) | 30d | 2027-03-01 | 2027-04-09 | 111, 108, 115SS+5d | 0d |  | Week 12 | ELEC |
| 133 | 7.7 | Refrigeration Piping Rough-In | 30d | 2027-03-01 | 2027-04-09 | 111, 108, 115SS+5d | 0d |  | Week 12 | REFR |
| 134 | 7.8 | Plumbing Above-Grade Rough-In | 10d | 2027-03-01 | 2027-03-12 | 111, 108, 115SS+5d | 20d | 0d | Week 12 | PLMB |
| 135 | 7.9 | Perimeter & Interior Wall Framing / Drywall Hang | 15d | 2027-03-01 | 2027-03-19 | 105, 115SS+5d | 7d | 0d | Week 12 | FRAMING |
| 136 | 7.10 | MEP Above-Ceiling / In-Wall Rough-In Inspections | 1d | 2027-04-12 | 2027-04-12 | 130, 131, 132, 133, 134, 135 | 0d |  | Week 18 | ROUGHINSP |
| 137 | 7.11 | Install Freezer & Cooler Boxes | 9d | 2027-03-22 | 2027-04-01 | 135, 107, 43 | 32d | 0d | Week 15 | COLDRM |
| 138 | 7.12 | Install Switchgear / Prefab Power Center, Feeders & Pipe | 9d | 2027-03-22 | 2027-04-01 | 135, 38 | 7d | 0d | Week 15 | SWGR |
| 139 | 7.13 | Electrical Service Inspection & Release to Utility | 1d | 2027-04-02 | 2027-04-02 | 138, 80 | 14d | 0d | Week 16 | ELECINSP |
| 140 | 7.14 | Jackson EMC Set Transformer & Energize Permanent Power | 5d | 2027-04-05 | 2027-04-09 | 139 | 14d | 0d | Week 17 | PERMPWR |
| 141 | 7.15 | Gas Meter Set & Service Activated | 2d | 2027-03-15 | 2027-03-16 | 79, 134 | 32d | 18d | Week 14 | GASMTR |
| 142 | 7.16 | Water Meter Set & Domestic Water Activated | 2d | 2027-03-15 | 2027-03-16 | 77, 134 | 32d | 18d | Week 14 | WTRMTR |
| 143 | 7.17 | AT&T Telecom Service to Demarc | 5d | 2027-04-02 | 2027-04-08 | 81, 138 | 15d | 1d | Week 16 | TELCO |
| 144 | 7.18 | Panels, Wiring & Terminations | 10d | 2027-04-02 | 2027-04-15 | 138 | 7d | 0d | Week 16 | PNLWIRE |
| 145 | 7.19 | Install Interior HM Frames | 3d | 2027-03-22 | 2027-03-24 | 135 | 38d | 2d | Week 15 | HMFRAME |
| 146 | 7.20 | Drywall Finishing & Punch-Out | 5d | 2027-03-22 | 2027-03-26 | 135 | 11d | 0d | Week 15 | DWFIN |
| 147 | 7.21 | Install Doors & Hardware | 5d | 2027-03-29 | 2027-04-02 | 145, 146 | 36d | 21d | Week 16 | DOORS |
| 148 | 7.22 | FRP / Stainless Panels | 4d | 2027-03-29 | 2027-04-01 | 146 | 32d | 0d | Week 16 | FRP |
| 149 | 7.23 | Bakery Kitchen Hood & KEF-1 | 3d | 2027-03-29 | 2027-03-31 | 131, 117 | 41d |  | Week 16 | HOOD |
| 150 | 7.24 | Epoxy Floor Coating (Bakery) | 5d | 2027-04-02 | 2027-04-08 | 148, 146, 137 | 32d |  | Week 16 | EPOXY |
| 151 | 7.25 | Install ACT Grid | 5d | 2027-04-12 | 2027-04-16 | 146, 131, 129, 132 | 13d | 0d | Week 18 | ACTGRID |
| 152 | 7.26 | Ceiling Devices | 5d | 2027-04-19 | 2027-04-23 | 151 | 13d | 6d | Week 19 | CEILDEV |
| 153 | 7.27 | LV Rough-In (Cable Tray, EMT, Boxes, Pull Strings - GC Scope) | 20d | 2027-04-02 | 2027-04-29 | 144SS | 14d | 0d | Week 16 | LVRI |
| 154 | 7.28 | FA Rough-In | 10d | 2027-04-16 | 2027-04-29 | 144 | 9d | 2d | Week 18 | FARI |
| 155 | 7.29 | Deck Painting & Wall Painting | 15d | 2027-04-13 | 2027-05-03 | 136, 146 | 0d |  | Week 18 | PAINT |
| 156 | 7.30 | Concrete Polishing - Sales Floor | 10d | 2027-05-04 | 2027-05-17 | 155 | 0d |  | Week 21 | POLISH |
| 157 | 7.31 | Light Fixtures & Light Tracks Installation | 15d | 2027-04-23 | 2027-05-13 | 155SS+8d, 144, 46 | 2d | 0d | Week 19 | LIGHTS |
| 158 | 7.32 | Install ACT | 3d | 2027-05-04 | 2027-05-06 | 151, 152, 154, 155 | 7d | 0d | Week 21 | ACT |
| 159 | 7.33 | Install FA Devices | 5d | 2027-05-07 | 2027-05-13 | 158, 154 | 10d | 0d | Week 21 | FADEV |
| 160 | 7.34 | Complete Fixture & Tie-Ins | 5d | 2027-04-16 | 2027-04-22 | 144 | 17d | 15d | Week 18 | FIXTIE |
| 161 | 7.35 | IT / Server Room Ready (Split AC, Cable Tray, Anti-Static Paint, Ground Bar, Demarc Board) | 3d | 2027-04-30 | 2027-05-04 | 155SS+5d, 153, 144 | 14d | 0d | Week 20 | ITROOM |
| 162 | 7.36 | BMS Panel Install & Wiring Terminations | 10d | 2027-04-16 | 2027-04-29 | 144, 54 | 14d | 0d | Week 18 | BMSINST |
| 163 | 7.37 | Set Generator & ATS | 3d | 2027-04-02 | 2027-04-06 | 52, 138, 83 | 38d | 3d | Week 16 | GENSET |
| 164 | 7.38 | RTU Factory Start-Up (Lennox) | 2d | 2027-04-16 | 2027-04-19 | 140, 141, 117, 131, 144 | 22d | 8d | Week 18 | RTUSTART |
| 165 | 7.39 | Generator Start-Up & ATS Programming | 1d | 2027-04-12 | 2027-04-12 | 163, 140, 141 | 35d |  | Week 18 | GENSTART |
| 166 | 7.40 | Plumbing Fixtures, Sinks & Water Heater Start-Up | 5d | 2027-05-04 | 2027-05-10 | 155, 148, 142 | 10d |  | Week 21 | PLMBFIX |
| 167 | 7.41 | MEP Trim-Out | 5d | 2027-05-14 | 2027-05-20 | 158, 157, 160, 155 | 2d | 0d | Week 22 | MEPTRIM |
| 168 | 7.42 | Set Refrigerated Upright Cases & Island Power Poles; Connect & Power | 5d | 2027-05-18 | 2027-05-24 | 156, 133, 144 | 0d |  | Week 23 | REFRCASE |
| 169 | 7.43 | Cold Room Penetrations Sealed & Cleaned | 2d | 2027-04-12 | 2027-04-13 | 137, 133 | 29d |  | Week 18 | COLDSEAL |
| 170 | 7.44 | Refrigeration Pressure Test, Leak Check & Start-Up | 5d | 2027-05-25 | 2027-05-31 | 168, 169, 140 | 0d |  | Week 24 | REFRSTART |
| 171 | 7.45 | McCue Crash Protection, Column Wraps & Packing Bench | 3d | 2027-05-18 | 2027-05-20 | 156 | 2d |  | Week 23 | BUMP |
| 172 | 7.46 | FA Panel Programming | 5d | 2027-05-14 | 2027-05-20 | 159, 140 | 24d | 6d | Week 22 | FAPROG |
| 173 | 7.47 | Construction Clean #1, Floor Joint Fill & Final Floor Clean | 3d | 2027-05-25 | 2027-05-27 | 156, 167, 157, 168, 171, 150, 166 | 0d |  | Week 24 | CLEAN1 |
| 174 | 7.48 | Substantial Completion Checklist Walk (FM Fit-Out & IT Sign-Off) | 1d | 2027-05-28 | 2027-05-28 | 173, 169, 161, 149, 147, 159, 122, 9 | 0d |  | Week 24 | SCWALK |

Notes:
- 143: Demarc plywood & UPS duplex in electrical/technical room.
- 153: Lidl LV contractor pulls cable; GC/EC provides pathways.
- 162: Do not energize BMS panel before Emerson arrives.
- 163: Scope to be confirmed.

| ID | WBS | Task | Type | Duration | Start | Finish | Predecessors | Total slack | Free slack | Deadline | Lidl Week | Key |
| --- | --- | --- | --- | --- | --- | --- | --- | --- | --- | --- | --- | --- |
| 175 | 8 | **COMMISSIONING & BMS** |  | 42d | 2027-04-29 | 2027-06-28 |  | 0d |  |  | Week 20 | S_CX |
| 176 | 8.1 | Test & Balance |  | 5d | 2027-05-21 | 2027-05-27 | 164, 167 | 2d |  |  | Week 23 | TAB |
| 177 | 8.2 | Emerson BMS Start-Up Checklist Submitted (min. 7 days prior) | milestone | 0d | 2027-04-29 | 2027-04-29 | 162, 164 | 14d | 0d |  | Week 20 | BMSCHK |
| 178 | 8.3 | Emerson BMS Start-Up & Programming |  | 3d | 2027-05-07 | 2027-05-11 | 177FS+7ed | 14d |  |  | Week 21 | BMSSTART |
| 179 | 8.4 | Melink Pre-FPT Call & Pre-FPT Items Closed |  | 3d | 2027-06-01 | 2027-06-03 | 176, 178, 165, 170, 157 | 0d |  |  | Week 25 | PREFPT |
| 180 | 8.5 | Melink FPT Site Visit (All Trades On Site) |  | 2d | 2027-06-11 | 2027-06-14 | 179FS+7ed | 0d |  |  | Week 26 | FPT |
| 181 | 8.6 | Pre-BMS FPT Call & Items (Checkouts, IT Network, Telaid, AHT/Hussmann) |  | 3d | 2027-06-15 | 2027-06-17 | 180, 185, 184, 192 | 0d |  |  | Week 27 | PREBMS |
| 182 | 8.7 | BMS FPT Site Visit (All Trades On Site) |  | 2d | 2027-06-25 | 2027-06-28 | 181FS+7ed | 0d |  |  | Week 28 | BMSFPT |
| 183 | 9 | **LIDL FM / IT / SECURITY FIT-OUT (OWNER VENDORS)** |  | 39d | 2027-05-05 | 2027-06-28 |  | 3d |  |  | Week 21 | S_FM |
| 184 | 9.1 | Lidl IT Cabling Contractor Fit-Out |  | 15d | 2027-05-05 | 2027-05-25 | 18 | 14d | 0d |  | Week 21 | ITFIT |
| 185 | 9.2 | Security Vendor (Telaid) Install |  | 10d | 2027-05-12 | 2027-05-25 | 19FS+7ed, 184SS+5d | 14d |  |  | Week 22 | SECINST |
| 186 | 9.3 | Millwork Delivery & Install |  | 10d | 2027-06-01 | 2027-06-14 | 12FS+1d | 11d | 0d |  | Week 25 | FM_MILL |
| 187 | 9.4 | Registers & Front End Equipment Delivery & Install |  | 5d | 2027-06-01 | 2027-06-07 | 12FS+1d | 18d |  |  | Week 25 | FM_REG |
| 188 | 9.5 | FM Shelving Delivery & Install |  | 10d | 2027-06-01 | 2027-06-14 | 12FS+1d | 13d |  |  | Week 25 | FM_SHELF |
| 189 | 9.6 | Bakery Ovens |  | 3d | 2027-06-02 | 2027-06-04 | 12FS+2d | 15d | 1d |  | Week 25 | FM_OVEN |
| 190 | 9.7 | All Sinks & Controls |  | 2d | 2027-06-02 | 2027-06-03 | 12FS+2d | 16d | 2d |  | Week 25 | FM_SINK |
| 191 | 9.8 | Deli / Bread Slicer Final Connections |  | 2d | 2027-06-15 | 2027-06-16 | 186 | 11d |  |  | Week 27 | FM_DELI |
| 192 | 9.9 | Self-Checkouts Delivery & Install |  | 3d | 2027-06-08 | 2027-06-10 | 12FS+6d | 2d |  |  | Week 26 | FM_SCO |
| 193 | 9.10 | Decor Package Install |  | 10d | 2027-06-15 | 2027-06-28 | 12FS+11d | 0d |  |  | Week 27 | FM_DECOR |
| 194 | 9.11 | Cold Room Cool-Down / Pull-Down |  | 5d | 2027-06-01 | 2027-06-07 | 20, 12 | 18d |  |  | Week 25 | COOLDOWN |
| 195 | 10 | **INSPECTIONS, C of O & CLOSEOUT** |  | 41d | 2027-05-31 | 2027-07-26 |  | 0d |  |  | Week 25 | S_CLOSE |
| 196 | 10.1 | MEP Final Inspections (Plumbing, Mechanical, Electrical, Refrigeration) |  | 5d | 2027-06-01 | 2027-06-07 | 12, 176, 170 | 14d | 0d |  | Week 25 | FINMEP |
| 197 | 10.2 | Fire Alarm & Sprinkler Acceptance Test |  | 1d | 2027-05-31 | 2027-05-31 | 172, 130, 12 | 18d | 0d |  | Week 25 | FAACC |
| 198 | 10.3 | Final Life Safety / Fire Marshal Inspection |  | 3d | 2027-06-01 | 2027-06-03 | 197 | 18d | 4d |  | Week 25 | FINLS |
| 199 | 10.4 | Final Health Inspection |  | 2d | 2027-06-08 | 2027-06-09 | 189, 190, 166, 196 | 14d | 0d |  | Week 26 | FINHEALTH |
| 200 | 10.5 | Building Final Inspection (County) |  | 2d | 2027-06-10 | 2027-06-11 | 196, 198, 199, 91 | 14d | 0d |  | Week 26 | BLDGFINAL |
| 201 | 10.6 | Construction Clean #2, Power Wash & Window Wash |  | 3d | 2027-06-29 | 2027-07-01 | 193, 90 | 0d |  |  | Week 29 | CLEAN2 |
| 202 | 10.7 | Handover Day Walks (FM Handover / Sales) & Keys |  | 1d | 2027-07-02 | 2027-07-02 | 21, 201, 188, 187, 191, 185, 194, 116, 124, 125 | 0d |  |  | Week 29 | HANDOVER |
| 203 | 10.8 | Punch List Completion |  | 5d | 2027-07-05 | 2027-07-09 | 202 | 0d |  |  | Week 30 | PUNCH |
| 204 | 10.9 | Closeout Documentation (O&Ms, As-Builts, Warranties) Submitted |  | 10d | 2027-05-31 | 2027-06-11 | 12 | 20d |  |  | Week 25 | CLOSEDOCS |
| 205 | 10.10 | 30-Day Written Notice of Final Completion Date (Sec. 3.4.1) |  | 1d | 2027-05-31 | 2027-05-31 | 12 | 9d |  | 2027-06-26 | Week 25 | NOTICEFC |
| 206 | 10.11 | Final Completion Walk & Exh. K Closeout Document |  | 1d | 2027-07-12 | 2027-07-12 | 203, 204, 13, 14, 205FS+30ed | 0d |  |  | Week 31 | FCWALK |
| 207 | 10.12 | Exh. N-2 Post-Handover Items (within 20 days of FC) |  | 5d | 2027-07-13 | 2027-07-19 | 15 | 0d |  | 2027-08-15 | Week 31 | POSTFC |
| 208 | 10.13 | Final Pay App, Lien Waivers, Affidavits & Warranty Bond |  | 5d | 2027-07-20 | 2027-07-26 | 15, 207, 209 | 0d |  |  | Week 32 | FINALPAY |
| 209 | 10.14 | Final Change Orders Submitted (within 30 days of FC) |  | 1d | 2027-07-13 | 2027-07-13 | 15 | 4d |  | 2027-08-25 | Week 31 | FINALCO |

Notes:
- 175: Melink & Emerson need 7 days' notice; systems running 48 hrs before Cx.
- 177: $2,250/day surcharge if not ready.
- 184: Owner LV vendor.
- 191: After bakery millwork installed (SC Checklist 1.29).
- 200: Special inspection reports to Building Official before occupancy (G001).
- 204: Due at SC; missing items no later than 2 weeks after.
- 209: Award minutes. Linked ahead of final pay app.
